# ex3

Schedule from MS Project, 2024-10-10 to 2025-09-23, status date 2025-04-10, costs in $, A marks actual dates.

## Calendars

- Standard: Mon-Fri 08:00-12:00, 13:00-17:00; Sat-Sun off.

## Resources

| Resource | Group | Unit | Rate |
| --- | --- | --- | --- |
| Architect | Consultant |  | 9 |
| Draftsperson | Staff |  | 7 |
| Building Clerk | Staff |  | 8 |
| Supervisor | Staff |  | 12 |
| Rigger | Wages |  | 5 |
| Boilermaker | Wages |  | 5 |
| Welder | Wages |  | 6 |
| Carpenter | Wages |  | 7 |
| Painter | Wages |  | 6 |
| Labourer | Wages |  | 6 |
| Driver | Wages |  | 8 |
| No Barrier Fencing | Contractor |  | 3 |
| Rock Solid Concrete | Contractor |  | 4 |
| Listen Ear Audio | Contractor |  | 5 |
| In Focus Video | Contractor |  | 5 |
| Pure Grass Turf | Contractor |  | 5 |
| Building Inspector | Government |  | 5 |
| High Jib Crane | Equipment |  | 7 |
| Grader | Equipment |  | 6 |
| Air Compressor | Equipment |  | 7 |
| Utility | Equipment |  | 5 |
| Electrician | Staff |  | 7 |
| Plumber | Staff |  | 5 |
| Astro Turf | Material | Square Matre | 12 |
| Paint | Ute | Ultre | 20 |
| Tax |  |  |  |
| Bonus |  |  |  |
| Part Time Fee |  |  |  |
| Logictis Cost |  |  |  |

## Schedule

| ID | WBS | Task | Type | Duration | Start | Finish | Predecessors | Complete | Remaining | Total slack | Free slack | Resources | Work | Actual work | Cost | Actual cost |
| --- | --- | --- | --- | --- | --- | --- | --- | --- | --- | --- | --- | --- | --- | --- | --- | --- |
| 1 | 1 | **Planning** |  | 43d | 2024-10-10 A | 2024-12-09 A |  | 100% |  |  |  |  | 678h | 678h | 5,620 | 5,620 |
| 2 | 1.1 | Creating architectural plans |  | 3w | 2024-10-10 A | 2024-10-30 A |  | 100% |  |  |  | Architect; Draftsperson [200%]; Building Clerk [25%] | 390h | 390h | 3,000 | 3,000 |
| 3 | 1.2 | Submit plans for approval |  | 1mo | 2024-10-31 A | 2024-11-27 A | 2 | 100% |  |  |  | Architect | 160h | 160h | 1,440 | 1,440 |
| 4 | 1.3 | Order materials |  | 8d | 2024-11-28 A | 2024-12-09 A | 3 | 100% |  |  |  | Draftsperson; Building Clerk | 128h | 128h | 960 | 960 |
| 5 | 1.4 | Planning Completed | milestone | 0d | 2024-12-09 A | 2024-12-09 A | 2, 3, 4 | 100% |  |  |  | Part Time Fee; Bonus |  |  | 220 | 220 |
| 6 | 2 | **Site Works** |  | 27d | 2024-12-10 A | 2025-01-15 A |  | 100% |  |  |  |  | 1056h | 1056h | 8,304 | 8,304 |
| 7 | 2.1 | Erect fencing |  | 3d | 2024-12-10 A | 2024-12-12 A | 5 | 100% |  |  |  | No Barrier Fencing | 24h | 24h | 72 | 72 |
| 8 | 2.2 | Erect site building |  | 4d | 2024-12-13 A | 2024-12-18 A | 7 | 100% |  |  |  | Carpenter [400%]; Supervisor; Labourer | 192h | 192h | 1,472 | 1,472 |
| 9 | 2.3 | Clear and level site |  | 3w | 2024-12-19 A | 2025-01-08 A | 8 | 100% |  |  |  | Supervisor; Grader [200%]; Driver [200%] | 600h | 600h | 4,800 | 4,800 |
| 10 | 2.4 | Prepare drainage infrastructure |  | 1w | 2025-01-09 A | 2025-01-15 A | 9 | 100% |  |  |  | Supervisor [50%]; Plumber [200%] | 100h | 100h | 640 | 640 |
| 11 | 2.5 | Prepare cabling infrastructure |  | 1w | 2025-01-09 A | 2025-01-15 A | 9 | 100% |  |  |  | Supervisor [50%]; Electrician [300%] | 140h | 140h | 1,080 | 1,080 |
| 12 | 2.6 | Site Works Completed | milestone | 0d | 2025-01-15 A | 2025-01-15 A | 7, 8, 9, 10, 11 | 100% |  |  |  | Logictis Cost |  |  | 240 | 240 |
| 13 | 3 | **Building Construction** |  | 129d | 2025-01-16 A | 2025-07-15 |  | 46% | 70.28d | 0d |  |  | 22992h | 12572h | 142,302 | 73,088 |
| 14 | 3.1 | Pour foundations |  | 4d | 2025-01-16 A | 2025-01-21 A | 12 | 100% |  |  |  | Rock Solid Concrete | 32h | 32h | 128 | 128 |
| 15 | 3.2 | Erect steelwork |  | 3mo | 2025-01-22 A | 2025-04-15 | 14 | 95% | 0.15mo | 0d |  | Supervisor [50%]; Rigger [600%]; Boilermaker [600%]; Welder [500%]; Labourer [600%]; Driver [200%]; High Jib Crane; Utility | 13200h | 12540h | 76,800 | 72,960 |
| 16 | 3.3 | Erect wall |  | 2mo | 2025-04-16 | 2025-06-10 | 15 |  |  | 0d |  | Supervisor [50%]; Carpenter [700%]; Labourer [400%]; Driver; Grader; Air Compressor; Electrician [75%]; Plumber [25%] | 4960h |  | 34,080 |  |
| 17 | 3.4 | Install roofing superstructure |  | 2w | 2025-06-11 | 2025-06-24 | 16 |  |  | 0d |  | Supervisor [50%]; Rigger [500%]; Boilermaker [500%]; Welder [300%]; Labourer [500%]; Driver [200%]; High Jib Crane; Utility; Air Compressor; Plumber [50%] | 1920h |  | 11,320 |  |
| 18 | 3.5 | Install roofing retracting mechanism |  | 1w | 2025-06-25 | 2025-07-01 | 17 |  |  | 0d |  | Supervisor [50%]; Welder [200%]; Boilermaker [200%]; Rigger [200%]; Electrician [200%]; Driver; High Jib Crane | 420h |  | 2,680 |  |
| 19 | 3.6 | Erect seating tiers |  | 3w | 2025-06-25 | 2025-07-15 | 18SS |  |  | 0d |  | Supervisor [50%]; Carpenter [800%]; Welder [200%]; Boilermaker [200%]; Labourer [500%]; Driver; Utility; Air Compressor | 2460h |  | 16,080 |  |
| 20 | 3.7 | Building Construction Completed | milestone | 0d | 2025-07-15 | 2025-07-15 | 14, 15, 16, 17, 18, 19 |  |  | 0d |  | Logictis Cost; Bonus |  |  | 1,214 |  |
| 21 | 4 | **Fit Out** |  | 35d | 2025-07-16 | 2025-09-02 |  |  |  | 0d |  |  | 2920h |  | 17,850 |  |
| 22 | 4.1 | Fit all windows and doors |  | 2w | 2025-07-16 | 2025-07-29 | 20 |  |  | 25d |  | Carpenter [500%]; Labourer [200%] | 560h |  | 3,760 |  |
| 23 | 4.2 | Install electrical cabling |  | 1w | 2025-07-16 | 2025-07-22 | 20 |  |  | 20d | 0d | Electrician [300%]; Labourer [200%] | 200h |  | 1,320 |  |
| 24 | 4.3 | Install electrical fittings and fixtures |  | 2w | 2025-07-23 | 2025-08-05 | 23 |  |  | 20d |  | Electrician [300%] | 240h |  | 1,680 |  |
| 25 | 4.4 | Install all plumbing |  | 2w | 2025-07-16 | 2025-07-29 | 20 |  |  | 20d | 0d | Plumber [200%]; Labourer [200%] | 320h |  | 1,760 |  |
| 26 | 4.5 | Install plumbing fixtures and fittings |  | 1w | 2025-07-30 | 2025-08-05 | 25 |  |  | 20d |  | Plumber [200%] | 80h |  | 400 |  |
| 27 | 4.6 | Lay astro turf |  | 1w | 2025-07-16 | 2025-07-22 | 20 |  |  | 30d |  | Pure Grass Turf | 40h |  | 200 |  |
| 28 | 4.7 | Erect handrails and fencing |  | 2w | 2025-07-16 | 2025-07-29 | 20 |  |  | 0d |  | Welder [400%]; Boilermaker [200%] | 480h |  | 2,720 |  |
| 29 | 4.8 | Paint rooms, fixtures, fittings, etc. |  | 1mo | 2025-07-30 | 2025-08-26 | 28 |  |  | 0d |  | Painter [500%] | 800h |  | 4,800 |  |
| 30 | 4.9 | Install PA system |  | 2d | 2025-07-23 | 2025-07-24 | 23 |  |  | 23d |  | Listen Ear Audio | 16h |  | 80 |  |
| 31 | 4.10 | Install video imaging equipment |  | 3d | 2025-07-23 | 2025-07-25 | 23 |  |  | 22d |  | In Focus Video | 24h |  | 120 |  |
| 32 | 4.11 | Fit out control room |  | 1w | 2025-08-27 | 2025-09-02 | 29, 30, 31 |  |  | 0d |  | Electrician [200%]; Listen Ear Audio; In Focus Video | 160h |  | 960 |  |
| 33 | 4.12 | Fit Out Completed | milestone | 0d | 2025-09-02 | 2025-09-02 | 22, 23, 24, 25, 26, 27, 28, 29, 30, 31, 32 |  |  | 0d |  | Tax |  |  | 50 |  |

| ID | WBS | Task | Type | Duration | Start | Finish | Predecessors | Total slack | Resources | Work | Cost |
| --- | --- | --- | --- | --- | --- | --- | --- | --- | --- | --- | --- |
| 34 | 5 | **Commissioning** |  | 15d | 2025-09-03 | 2025-09-23 |  | 0d |  | 424h | 3,676 |
| 35 | 5.1 | Test roof mechanism |  | 1w | 2025-09-03 | 2025-09-09 | 33 | 0d | Supervisor; Electrician [200%]; Rigger | 160h | 1,240 |
| 36 | 5.2 | Test PA system |  | 2d | 2025-09-03 | 2025-09-04 | 33 | 3d | Listen Ear Audio | 16h | 80 |
| 37 | 5.3 | Test video imaging equipment |  | 2d | 2025-09-03 | 2025-09-04 | 33 | 3d | In Focus Video | 16h | 80 |
| 38 | 5.4 | Test control room equipment |  | 1w | 2025-09-10 | 2025-09-16 | 35, 36, 37 | 0d | Supervisor; Listen Ear Audio [20%]; In Focus Video [20%]; Architect; Electrician [200%] | 176h | 1,480 |
| 39 | 5.5 | Obtain official occupancy |  | 1d | 2025-09-17 | 2025-09-17 | 38 | 0d | Architect; Building Clerk; Supervisor | 24h | 232 |
| 40 | 5.6 | Obtain safety certification |  | 2d | 2025-09-18 | 2025-09-19 | 39 | 0d | Supervisor | 16h | 192 |
| 41 | 5.7 | Official opening |  | 2d | 2025-09-22 | 2025-09-23 | 40 | 0d | Supervisor | 16h | 192 |
| 42 | 5.8 | Commissioning Completed | milestone | 0d | 2025-09-23 | 2025-09-23 | 35, 36, 37, 38, 39, 40, 41 | 0d | Bonus |  | 180 |
